# Project Planing

How a schedule from MS Project changed from version to version. A marks actual dates.

## Version 1 (saved 2014-10-16)

Note of the change: init project

| ID | WBS | Task | Duration | Start | Finish | Predecessors | Complete | Total float |
| --- | --- | --- | --- | --- | --- | --- | --- | --- |
| 1 | 1 | **MBGN Phase2 - 1** | 44.5d | 2014-09-22 A | 2014-11-21 |  | 18% | 0d |
| 2 |  | I. Study requirement | 1d | 2014-09-22 | 2014-09-22 |  |  | 27.5d |
| 3 | 1.2 | **II. Development** | 40.5d | 2014-09-23 A | 2014-11-18 |  | 20% | 0d |
| 4 | 1.2.1 | **1. In phiếu** | 6.5d | 2014-09-23 A | 2014-10-01 A | 2 | 100% |  |
| 5 | 1.2.1.1 | **Design** | 1.5d | 2014-09-23 A | 2014-09-24 A | 2 | 100% |  |
| 6 |  | Create Design | 1d | 2014-09-23 A | 2014-09-23 A | 2 | 100% |  |
| 7 |  | Review | 0.5d | 2014-09-24 A | 2014-09-24 A | 6 | 100% |  |
| 8 |  | Fix comment | 0.5d | 2014-09-24 A | 2014-09-24 A | 6 | 100% |  |
| 9 | 1.2.1.2 | **Coding + UT(nếu có)** | 3d | 2014-09-24 A | 2014-09-29 A | 5 | 100% |  |
| 10 |  | Coding | 2d | 2014-09-24 A | 2014-09-26 A |  | 100% |  |
| 11 |  | Review | 0.5d | 2014-09-26 A | 2014-09-26 A | 10 | 100% |  |
| 12 |  | Fix comment Review | 0.5d | 2014-09-29 A | 2014-09-29 A | 11 | 100% |  |
| 13 | 1.2.1.3 | **Test SST** | 2d | 2014-09-29 A | 2014-10-01 A | 9 | 100% |  |
| 14 |  | Create SST Script | 1d | 2014-09-29 A | 2014-09-30 A | 9 | 100% |  |
| 15 |  | Review | 1d | 2014-09-29 A | 2014-09-30 A | 9 | 100% |  |
| 16 |  | Fix comment | 1d | 2014-09-29 A | 2014-09-30 A | 9 | 100% |  |
| 17 |  | Execute SST | 1d | 2014-09-30 A | 2014-10-01 A | 16 | 100% |  |
| 18 |  | Fixbug SST | 1d | 2014-09-30 A | 2014-10-01 A | 16 | 100% |  |
| 19 | 1.2.2 | **2. Xuất kho** | 15.5d | 2014-10-01 | 2014-10-22 | 4 |  | 0d |
| 20 | 1.2.2.1 | **Design** | 3.5d | 2014-10-01 | 2014-10-06 |  |  | 0d |
| 21 |  | Create Design | 3d | 2014-10-01 | 2014-10-06 |  |  | 0d |
| 22 |  | Review | 0.5d | 2014-10-06 | 2014-10-06 | 21 |  | 0d |
| 23 |  | Fix comment | 0.5d | 2014-10-06 | 2014-10-06 | 21 |  | 0d |
| 24 | 1.2.2.2 | **Coding + UT(nếu có)** | 9d | 2014-10-07 | 2014-10-17 | 20 |  | 0d |
| 25 |  | Coding | 7d | 2014-10-07 | 2014-10-15 |  |  | 0d |
| 26 |  | Review | 1d | 2014-10-16 | 2014-10-16 | 25 |  | 0d |
| 27 |  | Fix comment Review | 1d | 2014-10-17 | 2014-10-17 | 26 |  | 0d |
| 28 | 1.2.2.3 | **Test SST** | 3d | 2014-10-20 | 2014-10-22 | 24 |  | 0d |
| 29 |  | Create SST Script | 1d | 2014-10-20 | 2014-10-20 | 24 |  | 2d |
| 30 |  | Review | 1d | 2014-10-20 | 2014-10-20 | 24 |  | 2d |
| 31 |  | Fix comment | 1d | 2014-10-20 | 2014-10-20 | 24 |  | 0d |
| 32 |  | Execute SST | 2d | 2014-10-21 | 2014-10-22 | 31 |  | 0d |
| 33 |  | Fixbug SST | 1d | 2014-10-21 | 2014-10-21 | 31 |  | 1d |
| 34 | 1.2.3 | **4. Email maketing** | 8d | 2014-10-23 | 2014-11-03 | 19 |  | 0d |
| 35 | 1.2.3.1 | **Design** | 1.5d | 2014-10-23 | 2014-10-24 |  |  | 0d |
| 36 |  | Create Design | 1d | 2014-10-23 | 2014-10-23 |  |  | 0d |
| 37 |  | Review | 0.5d | 2014-10-24 | 2014-10-24 | 36 |  | 0d |
| 38 |  | Fix comment | 0.5d | 2014-10-24 | 2014-10-24 | 36 |  | 0d |
| 39 | 1.2.3.2 | **Coding + UT(nếu có)** | 4d | 2014-10-24 | 2014-10-30 | 35 |  | 0d |
| 40 |  | Coding | 2d | 2014-10-24 | 2014-10-28 |  |  | 0d |
| 41 |  | Review | 1d | 2014-10-28 | 2014-10-29 | 40 |  | 0d |
| 42 |  | Fix comment Review | 1d | 2014-10-29 | 2014-10-30 | 41 |  | 0d |
| 43 | 1.2.3.3 | **Test SST** | 2.5d | 2014-10-30 | 2014-11-03 | 39 |  | 0d |
| 44 |  | Create SST Script | 1d | 2014-10-30 | 2014-10-31 |  |  | 0d |
| 45 |  | Review | 0.5d | 2014-10-31 | 2014-10-31 | 44 |  | 1d |
| 46 |  | Fix comment | 0.5d | 2014-10-31 | 2014-10-31 | 44 |  | 0d |
| 47 |  | Execute SST | 1d | 2014-11-03 | 2014-11-03 | 46 |  | 0d |
| 48 |  | Fixbug SST | 1d | 2014-11-03 | 2014-11-03 | 46 |  | 0d |
| 49 | 1.2.4 | **3. Quản lý chi phí** | 8.5d | 2014-11-04 | 2014-11-14 | 34 |  | 0d |
| 50 | 1.2.4.1 | **Design** | 1.5d | 2014-11-04 | 2014-11-05 |  |  | 0d |
| 51 |  | Create Design | 1d | 2014-11-04 | 2014-11-04 |  |  | 0d |
| 52 |  | Review | 0.5d | 2014-11-05 | 2014-11-05 | 51 |  | 0d |
| 53 |  | Fix comment | 0.5d | 2014-11-05 | 2014-11-05 | 51 |  | 0d |
| 54 | 1.2.4.2 | **Coding + UT(nếu có)** | 4d | 2014-11-05 | 2014-11-11 | 50 |  | 0d |
| 55 |  | Coding | 2d | 2014-11-05 | 2014-11-07 |  |  | 0d |
| 56 |  | Review | 1d | 2014-11-07 | 2014-11-10 | 55 |  | 0d |
| 57 |  | Fix comment Review | 1d | 2014-11-10 | 2014-11-11 | 56 |  | 0d |
| 58 | 1.2.4.3 | **Test SST** | 3d | 2014-11-11 | 2014-11-14 | 54 |  | 0d |
| 59 |  | Create SST Script | 1d | 2014-11-11 | 2014-11-12 |  |  | 0d |
| 60 |  | Review | 0.5d | 2014-11-12 | 2014-11-12 | 59 |  | 0d |
| 61 |  | Fix comment | 0.5d | 2014-11-13 | 2014-11-13 | 60 |  | 0d |
| 62 |  | Execute SST | 1d | 2014-11-13 | 2014-11-14 | 61 |  | 0d |
| 63 |  | Fixbug SST | 1d | 2014-11-13 | 2014-11-14 | 61 |  | 0d |
| 64 |  | 5. update giao diện fontend | 2d | 2014-11-14 | 2014-11-18 | 49 |  | 0d |
| 65 | 1.3 | **III. Test ST** | 3d | 2014-11-18 | 2014-11-21 | 3 |  | 0d |
| 66 |  | Test | 1d | 2014-11-18 | 2014-11-19 |  |  | 0d |
| 67 |  | Refix | 1d | 2014-11-19 | 2014-11-20 | 66 |  | 0d |
| 68 |  | Buffer day | 1d | 2014-11-20 | 2014-11-21 | 67 |  | 0d |

## Version 2 (saved 2015-03-31)

Note of the change: add replan for module inventory stock

Last finish 2014-11-21 → 2015-05-19 (+179d). Complete tasks 11 → 12.

Changed:

| ID | Task | Start | Finish | Duration | Complete | Total float |
| --- | --- | --- | --- | --- | --- | --- |
| 1 | **MBGN Phase2 - 1** |  | 2014-11-21 → 2015-05-19 (+179d) | 44.5d → 171.5d | 18% → 23% |  |
| 3 | **II. Development** |  | 2014-11-18 → 2015-05-14 (+177d) | 40.5d → 167.5d | 20% → 25% |  |
| 19 | **2. Xuất kho** | 2014-10-01 A | 2014-10-22 → 2015-04-17 (+177d) | 15.5d → 142.5d | 0% → 15% |  |
| 20 | **Design** | 2014-10-01 A | 2014-10-06 → 2015-04-01 (+177d) | 3.5d → 130.5d | 0% → 60% |  |
| 21 | Create Design | 2014-10-01 A | 2014-10-06 A |  | 0% → 100% | 0d → none |
| 22 | Review | 2014-10-06 → 2015-04-01 (+177d) | 2014-10-06 → 2015-04-01 (+177d) | 0.5d → 1d |  | 0d → none |
| 23 | Fix comment |  | 2014-10-06 → 2014-10-07 (+1d) | 0.5d → 1d |  | 0d → 126.5d |
| 24 | **Coding + UT(nếu có)** | 2014-10-07 → 2015-04-02 (+177d) | 2014-10-17 → 2015-04-14 (+179d) |  |  |  |
| 25 | Coding | 2014-10-07 → 2015-04-02 (+177d) | 2014-10-15 → 2015-04-10 (+177d) |  |  |  |
| 26 | Review | 2014-10-16 → 2015-04-13 (+179d) | 2014-10-16 → 2015-04-13 (+179d) |  |  |  |
| 27 | Fix comment Review | 2014-10-17 → 2015-04-14 (+179d) | 2014-10-17 → 2015-04-14 (+179d) |  |  |  |
| 28 | **Test SST** | 2014-10-20 → 2015-04-15 (+177d) | 2014-10-22 → 2015-04-17 (+177d) |  |  |  |
| 29 | Create SST Script | 2014-10-20 → 2015-04-15 (+177d) | 2014-10-20 → 2015-04-15 (+177d) |  |  |  |
| 30 | Review | 2014-10-20 → 2015-04-15 (+177d) | 2014-10-20 → 2015-04-15 (+177d) |  |  |  |
| 31 | Fix comment | 2014-10-20 → 2015-04-15 (+177d) | 2014-10-20 → 2015-04-15 (+177d) |  |  |  |
| 32 | Execute SST | 2014-10-21 → 2015-04-16 (+177d) | 2014-10-22 → 2015-04-17 (+177d) |  |  |  |
| 33 | Fixbug SST | 2014-10-21 → 2015-04-16 (+177d) | 2014-10-21 → 2015-04-16 (+177d) |  |  |  |
| 34 | **4. Email maketing** | 2014-10-23 → 2015-04-20 (+179d) | 2014-11-03 → 2015-04-29 (+177d) |  |  |  |
| 35 | **Design** | 2014-10-23 → 2015-04-20 (+179d) | 2014-10-24 → 2015-04-21 (+179d) |  |  |  |
| 36 | Create Design | 2014-10-23 → 2015-04-20 (+179d) | 2014-10-23 → 2015-04-20 (+179d) |  |  |  |
| 37 | Review | 2014-10-24 → 2015-04-21 (+179d) | 2014-10-24 → 2015-04-21 (+179d) |  |  |  |
| 38 | Fix comment | 2014-10-24 → 2015-04-21 (+179d) | 2014-10-24 → 2015-04-21 (+179d) |  |  |  |
| 39 | **Coding + UT(nếu có)** | 2014-10-24 → 2015-04-21 (+179d) | 2014-10-30 → 2015-04-27 (+179d) |  |  |  |
| 40 | Coding | 2014-10-24 → 2015-04-21 (+179d) | 2014-10-28 → 2015-04-23 (+177d) |  |  |  |
| 41 | Review | 2014-10-28 → 2015-04-23 (+177d) | 2014-10-29 → 2015-04-24 (+177d) |  |  |  |
| 42 | Fix comment Review | 2014-10-29 → 2015-04-24 (+177d) | 2014-10-30 → 2015-04-27 (+179d) |  |  |  |
| 43 | **Test SST** | 2014-10-30 → 2015-04-27 (+179d) | 2014-11-03 → 2015-04-29 (+177d) |  |  |  |
| 44 | Create SST Script | 2014-10-30 → 2015-04-27 (+179d) | 2014-10-31 → 2015-04-28 (+179d) |  |  |  |
| 45 | Review | 2014-10-31 → 2015-04-28 (+179d) | 2014-10-31 → 2015-04-28 (+179d) |  |  |  |
| 46 | Fix comment | 2014-10-31 → 2015-04-28 (+179d) | 2014-10-31 → 2015-04-28 (+179d) |  |  |  |
| 47 | Execute SST | 2014-11-03 → 2015-04-29 (+177d) | 2014-11-03 → 2015-04-29 (+177d) |  |  |  |
| 48 | Fixbug SST | 2014-11-03 → 2015-04-29 (+177d) | 2014-11-03 → 2015-04-29 (+177d) |  |  |  |
| 49 | **3. Quản lý chi phí** | 2014-11-04 → 2015-04-30 (+177d) | 2014-11-14 → 2015-05-12 (+179d) |  |  |  |
| 50 | **Design** | 2014-11-04 → 2015-04-30 (+177d) | 2014-11-05 → 2015-05-01 (+177d) |  |  |  |
| 51 | Create Design | 2014-11-04 → 2015-04-30 (+177d) | 2014-11-04 → 2015-04-30 (+177d) |  |  |  |
| 52 | Review | 2014-11-05 → 2015-05-01 (+177d) | 2014-11-05 → 2015-05-01 (+177d) |  |  |  |
| 53 | Fix comment | 2014-11-05 → 2015-05-01 (+177d) | 2014-11-05 → 2015-05-01 (+177d) |  |  |  |
| 54 | **Coding + UT(nếu có)** | 2014-11-05 → 2015-05-01 (+177d) | 2014-11-11 → 2015-05-07 (+177d) |  |  |  |
| 55 | Coding | 2014-11-05 → 2015-05-01 (+177d) | 2014-11-07 → 2015-05-05 (+179d) |  |  |  |
| 56 | Review | 2014-11-07 → 2015-05-05 (+179d) | 2014-11-10 → 2015-05-06 (+177d) |  |  |  |
| 57 | Fix comment Review | 2014-11-10 → 2015-05-06 (+177d) | 2014-11-11 → 2015-05-07 (+177d) |  |  |  |
| 58 | **Test SST** | 2014-11-11 → 2015-05-07 (+177d) | 2014-11-14 → 2015-05-12 (+179d) |  |  |  |
| 59 | Create SST Script | 2014-11-11 → 2015-05-07 (+177d) | 2014-11-12 → 2015-05-08 (+177d) |  |  |  |
| 60 | Review | 2014-11-12 → 2015-05-08 (+177d) | 2014-11-12 → 2015-05-08 (+177d) |  |  |  |
| 61 | Fix comment | 2014-11-13 → 2015-05-11 (+179d) | 2014-11-13 → 2015-05-11 (+179d) |  |  |  |
| 62 | Execute SST | 2014-11-13 → 2015-05-11 (+179d) | 2014-11-14 → 2015-05-12 (+179d) |  |  |  |
| 63 | Fixbug SST | 2014-11-13 → 2015-05-11 (+179d) | 2014-11-14 → 2015-05-12 (+179d) |  |  |  |
| 64 | 5. update giao diện fontend | 2014-11-14 → 2015-05-12 (+179d) | 2014-11-18 → 2015-05-14 (+177d) |  |  |  |
| 65 | **III. Test ST** | 2014-11-18 → 2015-05-14 (+177d) | 2014-11-21 → 2015-05-19 (+179d) |  |  |  |
| 66 | Test | 2014-11-18 → 2015-05-14 (+177d) | 2014-11-19 → 2015-05-15 (+177d) |  |  |  |
| 67 | Refix | 2014-11-19 → 2015-05-15 (+177d) | 2014-11-20 → 2015-05-18 (+179d) |  |  |  |
| 68 | Buffer day | 2014-11-20 → 2015-05-18 (+179d) | 2014-11-21 → 2015-05-19 (+179d) |  |  |  |
